# Tidsplan for SMDB-projekt (2007)

Schedule from MS Project, 2025-10-07 to 2027-08-24, status date 2020-05-27.
Ramboll

## Calendars

- Standard: Mon-Fri 08:00-12:00, 13:00-17:00; Sat-Sun off. Exceptions (off unless hours are given): 2025-10-13 (Efterårsferie), 2025-12-01 to 2025-12-05 (MAB ferie), 2025-12-22 to 2026-01-04 (juleferie), 2026-02-09 to 2026-02-13 (vinterferie), 2026-02-26 to 2026-03-05 (Allan væk), 2026-03-30 to 2026-04-06 (Påskeferie), 2026-05-14 to 2026-05-15 (Kristihimmelfartsdag), 2026-05-25 (Pinseferie), 2026-07-01 to 2026-07-28 (Sommerferie), 2026-10-12 to 2026-10-16 (Efterårsferie), 2026-12-23 to 2027-01-03 (Juleferie), 2027-02-15 to 2027-02-19 (vinterferie 27), 2027-03-25 to 2027-03-29 (Påskeferie 27), 2027-05-17 (2 pinsedag), 2027-07-05 to 2027-07-30 (Sommerferie 27).
- 7 days a week: Mon-Sun 08:00-16:00.

## Schedule

| ID | WBS | Task | Type | Duration | Start | Finish | Predecessors | Total slack |
| --- | --- | --- | --- | --- | --- | --- | --- | --- |
| 1 | 1 | **Udformning af udbudsmateriale** |  | 202d | 2025-10-07 | 2026-10-01 |  | 0d |
| 2 | 1.1 | 0. Initiering af udbud | milestone | 0d | 2025-10-07 | 2025-10-07 |  | 391.88d |
| 3 | 1.2 | Opstartsmøde | milestone | 0d | 2025-10-07 | 2025-10-07 |  | 0d |
| 4 | 1.3 | Forberedelse planlægningsmøde |  | 6d | 2025-10-07 | 2025-10-15 | 3 | 0d |
| 5 | 1.4 | Planlægningsmøde | milestone | 0d | 2025-10-15 | 2025-10-15 | 4 | 0d |
| 6 | 1.5 | Forberedelse WS1 |  | 7d | 2025-10-16 | 2025-10-24 | 5 | 0d |
| 7 | 1.6 | 1. Workshop - Rammesætning/blueprint og udbudstrategi | milestone | 0d | 2025-10-24 | 2025-10-24 | 6 | 0d |
| 8 | 1.7 | Forberedelse WS2 |  | 6d | 2025-10-27 | 2025-11-03 | 7 | 0d |
| 9 | 1.8 | 2. Workshop - Kravstruktur og overordnet kravgruppering (kravspecifikation ) del 1 | milestone | 0d | 2025-11-03 | 2025-11-03 | 8 | 0d |
| 10 | 1.9 | Forberedelse WS3 |  | 11d | 2025-11-04 | 2025-11-18 | 9 | 0d |
| 11 | 1.10 | 3. Workshop - Samarbejdsorganisation, kundens ydelser, forpligtelser ved ophør og krav til dokumentation | milestone | 0d | 2025-11-18 | 2025-11-18 | 10 | 0d |
| 12 | 1.11 | Forberedelse WS4 |  | 11d | 2025-11-19 | 2025-12-10 | 11 | 0d |
| 13 | 1.12 | 4. Workshop - Projektdimension tidsplan og prøver | milestone | 0d | 2025-12-10 | 2025-12-10 | 12 | 0d |
| 14 | 1.13 | Forberedelse WS5 |  | 8d | 2025-12-11 | 2026-01-05 | 13 | 0d |
| 15 | 1.14 | 5. Workshop - Kundens IT-miljø herunder især driftsforhold | milestone | 0d | 2026-01-05 | 2026-01-05 | 14 | 0d |
| 16 | 1.15 | Forberedelse WS6 |  | 15d | 2026-01-06 | 2026-01-26 | 15 | 0d |
| 17 | 1.16 | 6. Workshop - Leverancebeskrivelse (Kravspecifikation) del 2 | milestone | 0d | 2026-01-26 | 2026-01-26 | 16 | 0d |
| 18 | 1.17 | Serie af kravmøder 9/2, 16/ 2 og 20/2 |  | 15d | 2026-01-27 | 2026-02-23 | 17 | 0d |
| 19 | 1.18 | 6a Workshop - Struktur og opsamling | milestone | 0d | 2026-02-23 | 2026-02-23 | 18 | 0d |
| 20 | 1.19 | Forberedelse WS7 |  | 4d | 2026-02-24 | 2026-03-09 | 19 | 0d |
| 21 | 1.20 | 7. Workshop - . Workshop - Vedligehold , support, servicemål | milestone | 0d | 2026-03-09 | 2026-03-09 | 20 | 0d |
| 22 | 1.21 | Forberedelse WS8 |  | 5d | 2026-03-10 | 2026-03-16 | 21 | 0d |
| 23 | 1.22 | 8. Workshop - Leverancebeskrivelse (Kravspecifikation) del 3 | milestone | 0d | 2026-03-16 | 2026-03-16 | 22 | 0d |
| 24 | 1.23 | Forberedelse WS9 |  | 5d | 2026-03-17 | 2026-03-23 | 23 | 0d |
| 25 | 1.24 | 9. Workshop- Kravspec del 4 | milestone | 0d | 2026-03-23 | 2026-03-23 | 24 | 0d |
| 26 | 1.25 | Forberedelse WS10 |  | 8d | 2026-03-24 | 2026-04-10 | 25 | 0d |
| 27 | 1.26 | Møde 13/4 samt efterfølgende proceser og justering af udbudsmaterialemateriale |  | 4d | 2026-04-13 | 2026-04-16 | 26 | 0d |
| 28 | 1.27 | 10. Workshop - Vedr. Bilag 1 og bilag 14 | milestone | 0d | 2026-04-16 | 2026-04-16 | 27 | 0d |
| 29 | 1.28 | Forberedelse |  | 3d | 2026-04-17 | 2026-04-21 | 28 | 0d |
| 30 | 1.29 | 11. Workshop Opsamling vedr. Kravspecifikation del 5 | milestone | 0d | 2026-04-21 | 2026-04-21 | 29 | 0d |
| 31 | 1.30 | Forberedelse |  | 6d | 2026-04-22 | 2026-04-29 | 30 | 0d |
| 32 | 1.31 | 12. Workshop - Kontrakten del 1 samt databehandleraftale | milestone | 0d | 2026-04-29 | 2026-04-29 | 31 | 0d |
| 33 | 1.32 | Forberedelse |  | 9d | 2026-04-30 | 2026-05-12 | 32 | 0d |
| 34 | 1.33 | 13. Workshop - Vedr. Bilag 5 og 6 | milestone | 0d | 2026-05-12 | 2026-05-12 | 33 | 0d |
| 35 | 1.34 | Forberedelse |  | 3d | 2026-05-13 | 2026-05-19 | 34 | 0d |
| 36 | 1.35 | 14. Workshop - Kontrakten del 2 | milestone | 0d | 2026-05-19 | 2026-05-19 | 35 | 0d |
| 37 | 1.36 | Forberedelse |  | 4d | 2026-05-20 | 2026-05-26 | 36 | 0d |
| 38 | 1.37 | 15. Workshop - Vederlag | milestone | 0d | 2026-05-26 | 2026-05-26 | 37 | 0d |
| 39 | 1.38 | Forberedelse |  | 5d | 2026-05-27 | 2026-06-02 | 38 | 0d |
| 40 | 1.39 | 16. Workshop Bekendtgørelse, udbudsbetingelser (herunder tildelingskriterier og evalueringsmodel) samt ekstra tjek af vederlag | milestone | 0d | 2026-06-02 | 2026-06-02 | 39 | 0d |
| 41 | 1.40 | Forberedelse |  | 4d | 2026-06-03 | 2026-06-08 | 40 | 0d |
| 42 | 1.41 | 17. Workshop - Samlet review af udbudsmateriale | milestone | 0d | 2026-06-08 | 2026-06-08 | 41 | 0d |
| 43 | 1.42 | Evt justering af materialet |  | 3d | 2026-06-09 | 2026-06-11 | 42 | 0d |
| 44 | 1.43 | Godkendelse styregruppe af samlet udbudsmateriale |  | 10d | 2026-06-12 | 2026-06-25 | 43 | 0d |
| 45 | 1.44 | Evt justering af materialet |  | 4d | 2026-06-26 | 2026-07-29 | 44 | 0d |
| 46 | 1.45 | Reviewmøde - opsamling fra LMST reviewrunde | milestone | 0d | 2026-07-29 | 2026-07-29 | 45 | 0d |
| 47 | 1.46 | Justering |  | 9d | 2026-07-30 | 2026-08-11 | 46 | 0d |
| 48 | 1.47 | Statusmøde vedr. Leverancevederlag etc. | milestone | 0d | 2026-08-11 | 2026-08-11 | 47 | 0d |
| 49 | 1.48 | Justering |  | 7d | 2026-08-12 | 2026-08-20 | 48 | 0d |
| 50 | 1.49 | Samlet reviewmøde | milestone | 0d | 2026-08-20 | 2026-08-20 | 49 | 0d |
| 51 | 1.50 | Justering |  | 5d | 2026-08-21 | 2026-08-27 | 50 | 0d |
| 52 | 1.51 | Styregrupppemøde | milestone | 0d | 2026-08-27 | 2026-08-27 | 51 | 0d |
| 53 | 1.52 | Justering |  | 25d | 2026-08-28 | 2026-10-01 | 52 | 0d |
| 54 | 1.53 | Milepæl: Indrykning af udbudsbekendtgørelse og publicering af det samlede udbudsmateriale | milestone | 0d | 2026-10-01 | 2026-10-01 | 53 | 0d |

| ID | WBS | Task | Type | Duration | Start | Finish | Predecessors | Total slack | Constraint | Calendar |
| --- | --- | --- | --- | --- | --- | --- | --- | --- | --- | --- |
| 55 | 2 | **Prækvalifikationsfase** |  | 41d | 2026-10-02 | 2026-12-04 |  | 0d |  |  |
| 56 | 2.1 | Leverandøren udarbejder prækvalifikation |  | 22d | 2026-10-02 | 2026-11-09 | 54 | 0d |  |  |
| 57 | 2.2 | Spørgsmål svar LMST |  | 22d | 2026-10-02 | 2026-11-09 |  | 167.88d | start no earlier than 2026-10-02 |  |
| 58 | 2.3 | Modtagelse af prækvalifikationsmateriale | milestone | 0d | 2026-11-09 | 2026-11-09 | 56 | 0d |  |  |
| 59 | 2.4 | Vurdering og indstilling vedr. prækval |  | 16d | 2026-11-10 | 2026-12-01 | 58 | 0d |  |  |
| 60 | 2.5 | Godkendelse af indstilling vedr prækval |  | 3d | 2026-12-02 | 2026-12-04 | 59 | 0d |  |  |
| 61 | 2.6 | Milepæl: Udarbejdelse af afslagsbreve + opfordring til afgivelse af indledende tilbud | milestone | 0d | 2026-12-04 | 2026-12-04 | 60 | 0d |  |  |
| 62 | 3 | **Tilbudsfasen (indledende tilbud)** |  | 38d | 2026-12-07 | 2027-02-08 |  | 0d |  |  |
| 63 | 3.1 | Tilbudsgivere udarbejder tilbud |  | 25d | 2026-12-07 | 2027-01-20 | 61 | 0d |  |  |
| 64 | 3.2 | Spørgsmål svar LMST før jul |  | 10d | 2026-12-07 | 2026-12-18 | 61 | 138.88d |  |  |
| 65 | 3.3 | Spørgsmål svar LMST efter jul |  | 5d | 2027-01-04 | 2027-01-08 |  | 8d | start no earlier than 2027-01-04 |  |
| 66 | 3.4 | Modtagelse af tilbudsmateriale | milestone | 0d | 2027-01-20 | 2027-01-20 | 63, 65 | 0d |  |  |
| 67 | 3.5 | Evaluering af tilbud og udarbejdelse af spørgsmål til forhandlingsrunden (beslutning om forhandling) |  | 13d | 2027-01-21 | 2027-02-08 | 66 | 0d |  |  |
| 68 | 4 | **Forhandlingsrunde 1** |  | 18d | 2027-02-09 | 2027-03-11 |  | 0d |  |  |
| 69 | 4.1 | Forventet tidspunkt for fremsendelse af diskussionsliste og agenda mv. til Tilbudsgiver 1, 2 og 3 |  | 4d | 2027-02-09 | 2027-02-12 | 67 | 0d |  |  |
| 70 | 4.2 | Dialogmøder med tilbudsgiver 1, 2 og 3 |  | 5d | 2027-02-22 | 2027-02-26 | 69 | 0d |  |  |
| 71 | 4.3 | Revidering af udbudsmateriale |  | 9d | 2027-03-01 | 2027-03-11 | 70 | 0d |  |  |
| 72 | 4.4 | Forventet tidspunkt for meddelelse om første reviderede tilbud samt udsendelse af evt. revideret udbudsmateriale | milestone | 0d | 2027-03-11 | 2027-03-11 | 71 | 0d |  |  |
| 73 | 5 | **Tilbudsfasen (endeligt tilbud)** |  | 86d | 2027-03-12 | 2027-08-12 |  | 0d |  |  |
| 74 | 5.1 | Tilbudsgivere udarbejder tilbud (frist vurderes konkret I relation til karakteren af ændringer I udbudsmaterialet) |  | 23d | 2027-03-12 | 2027-04-16 | 72 | 0d |  |  |
| 75 | 5.2 | Spørgsmål svar LMST |  | 17d | 2027-03-15 | 2027-04-09 |  | 74.88d | start no earlier than 2027-03-15 |  |
| 76 | 5.3 | Modtagelse af endeligt tilbud | milestone | 0d | 2027-04-16 | 2027-04-16 | 74 | 0d |  |  |
| 77 | 5.4 | Evaluering af endelige tilbud |  | 12d | 2027-04-19 | 2027-05-04 | 76 | 0d |  |  |
| 78 | 5.5 | Udarbejdelse af indstillingsnotat projektteam |  | 10d | 2027-05-05 | 2027-05-19 | 77 | 0d |  |  |
| 79 | 5.6 | Proces med styregruppe og digitaliseringsboard (4 uger) |  | 25d | 2027-05-20 | 2027-06-23 | 78 | 0d |  |  |
| 80 | 5.7 | Verifikation af ESPD (ligger uden for vores kontrol) |  | 10d | 2027-06-24 | 2027-08-04 | 79 | 0d |  |  |
| 81 | 5.8 | Tjek af verifikation af ESPD og godkendelse af indstilling |  | 4d | 2027-08-05 | 2027-08-10 | 80 | 0d |  |  |
| 82 | 5.9 | Udarbejdelse af afslagsbreve |  | 2d | 2027-08-11 | 2027-08-12 | 81 | 0d |  |  |
| 83 | 5.10 | Milepæl: Udmelding til tilbudsgivere | milestone | 0d | 2027-08-12 | 2027-08-12 | 82 | 0d |  |  |
| 84 | 6 | Standstill |  | 12d | 2027-08-13 | 2027-08-24 | 83 | 0d |  | 7 days a week |
| 85 | 7 | Milepæl: Tidligst mulige kontraktunderskrivelse | milestone | 0d | 2027-08-24 | 2027-08-24 | 84 | 0d |  |  |
